# D10126532InitialPlan

Schedule from MS Project, 2013-07-01 to 2013-07-01.
Microsoft

## Calendars

- Standard: Mon-Fri 08:00-12:00, 13:00-17:00; Sat-Sun off.

## Schedule

| ID | WBS | Task | Type | Duration | Start | Finish | Total slack |
| --- | --- | --- | --- | --- | --- | --- | --- |
| 1 | 1 | **Project Planning** |  | 1d? | 2013-07-01 | 2013-07-01 | 0d |
| 2 | 1.1 | Project Charter Document |  | 1d? | 2013-07-01 | 2013-07-01 | 0d |
| 3 | 1.2 | Project Management Plan |  | 1d? | 2013-07-01 | 2013-07-01 | 0d |
| 4 | 2 | **Technical Product Design** |  | 1d? | 2013-07-01 | 2013-07-01 | 0d |
| 5 | 2.1 | Software Architecture Design |  | 1d? | 2013-07-01 | 2013-07-01 | 0d |
| 6 | 2.2 | Cloud Infrastructure Design |  | 1d? | 2013-07-01 | 2013-07-01 | 0d |
| 7 | 2.3 | Test Plan Design |  | 1d? | 2013-07-01 | 2013-07-01 | 0d |
| 8 | 2.4 | User Interface Design |  | 1d? | 2013-07-01 | 2013-07-01 | 0d |
| 9 | 3 | **Marketing Product Design** |  | 1d? | 2013-07-01 | 2013-07-01 | 0d |
| 10 | 3.1 | Search Engine Optimisation Design |  | 1d? | 2013-07-01 | 2013-07-01 | 0d |
| 11 | 3.2 | Product Marketing |  | 1d? | 2013-07-01 | 2013-07-01 | 0d |
| 12 | 4 | **Technical Implementation** |  | 1d? | 2013-07-01 | 2013-07-01 | 0d |
| 13 | 4.1 | **Sprint 1** |  | 1d? | 2013-07-01 | 2013-07-01 | 0d |
| 14 | 4.1.1 | Sprint Plan |  | 1d? | 2013-07-01 | 2013-07-01 | 0d |
| 15 | 4.1.2 | Implement Architecture Framework |  | 1d? | 2013-07-01 | 2013-07-01 | 0d |
| 16 | 4.1.3 | Integrate OAuth for Authencation |  | 1d? | 2013-07-01 | 2013-07-01 | 0d |
| 17 | 4.1.4 | Login page & dummy landing page with basic user info |  | 1d? | 2013-07-01 | 2013-07-01 | 0d |
| 18 | 4.1.5 | Develop automated test for sprint |  | 1d? | 2013-07-01 | 2013-07-01 | 0d |
| 19 | 4.1.6 | Release Sprint | milestone | 0d | 2013-07-01 | 2013-07-01 | 1d |
| 20 | 4.1.7 | Sprint Review & Improve Process |  | 1d? | 2013-07-01 | 2013-07-01 | 0d |
| 21 | 4.2 | **Sprint 2** |  | 1d? | 2013-07-01 | 2013-07-01 | 0d |
| 22 | 4.2.1 | Sprint Plan |  | 1d? | 2013-07-01 | 2013-07-01 | 0d |
| 23 | 4.2.2 | Implement Thesaurus Service Plugin |  | 1d? | 2013-07-01 | 2013-07-01 | 0d |
| 24 | 4.2.3 | Code Main HTML5/jQuery page |  | 1d? | 2013-07-01 | 2013-07-01 | 0d |
| 25 | 4.2.4 | Integrate Thesaursus Data with HTML/jQuery |  | 1d? | 2013-07-01 | 2013-07-01 | 0d |
| 26 | 4.2.5 | Develop automated test for sprint |  | 1d? | 2013-07-01 | 2013-07-01 | 0d |
| 27 | 4.2.6 | Release Sprint | milestone | 0d | 2013-07-01 | 2013-07-01 | 1d |
| 28 | 4.2.7 | Sprint Review & Improve Process |  | 1d? | 2013-07-01 | 2013-07-01 | 0d |

| ID | WBS | Task | Type | Duration | Start | Finish | Total slack |
| --- | --- | --- | --- | --- | --- | --- | --- |
| 29 | 4.3 | **Sprint 3** |  | 1d? | 2013-07-01 | 2013-07-01 | 0d |
| 30 | 4.3.1 | Sprint Plan |  | 1d? | 2013-07-01 | 2013-07-01 | 0d |
| 31 | 4.3.2 | TODO: |  | 1d? | 2013-07-01 | 2013-07-01 | 0d |
| 32 | 4.3.3 | Develop automated test for sprint |  | 1d? | 2013-07-01 | 2013-07-01 | 0d |
| 33 | 4.3.4 | Release Sprint | milestone | 0d | 2013-07-01 | 2013-07-01 | 1d |
| 34 | 4.3.5 | Sprint Review & Improve Process |  | 1d? | 2013-07-01 | 2013-07-01 | 0d |
| 35 | 4.4 | **Sprint 4** |  | 1d? | 2013-07-01 | 2013-07-01 | 0d |
| 36 | 4.4.1 | Sprint Plan |  | 1d? | 2013-07-01 | 2013-07-01 | 0d |
| 37 | 4.4.2 | TODO: |  | 1d? | 2013-07-01 | 2013-07-01 | 0d |
| 38 | 4.4.3 | Develop automated test for sprint |  | 1d? | 2013-07-01 | 2013-07-01 | 0d |
| 39 | 4.4.4 | Release Sprint | milestone | 0d | 2013-07-01 | 2013-07-01 | 1d |
| 40 | 4.4.5 | Sprint Review & Improve Process |  | 1d? | 2013-07-01 | 2013-07-01 | 0d |
| 41 | 4.5 | **Sprint 5** |  | 1d? | 2013-07-01 | 2013-07-01 | 0d |
| 42 | 4.5.1 | Sprint Plan |  | 1d? | 2013-07-01 | 2013-07-01 | 0d |
| 43 | 4.5.2 | TODO: |  | 1d? | 2013-07-01 | 2013-07-01 | 0d |
| 44 | 4.5.3 | Develop automated test for sprint |  | 1d? | 2013-07-01 | 2013-07-01 | 0d |
| 45 | 4.5.4 | Release Sprint | milestone | 0d | 2013-07-01 | 2013-07-01 | 1d |
| 46 | 4.5.5 | Sprint Review & Improve Process |  | 1d? | 2013-07-01 | 2013-07-01 | 0d |
| 47 | 4.6 | **Sprint X** |  | 1d? | 2013-07-01 | 2013-07-01 | 0d |
| 48 | 4.6.1 | Sprint Plan |  | 1d? | 2013-07-01 | 2013-07-01 | 0d |
| 49 | 4.6.2 | TODO: |  | 1d? | 2013-07-01 | 2013-07-01 | 0d |
| 50 | 4.6.3 | Develop automated test for sprint |  | 1d? | 2013-07-01 | 2013-07-01 | 0d |
| 51 | 4.6.4 | Release Sprint | milestone | 0d | 2013-07-01 | 2013-07-01 | 1d |
| 52 | 4.6.5 | Sprint Review & Improve Process |  | 1d? | 2013-07-01 | 2013-07-01 | 0d |

| ID | WBS | Task | Type | Duration | Start | Finish | Total slack |
| --- | --- | --- | --- | --- | --- | --- | --- |
| 53 | 4.7 | **Sprint Y** |  | 1d? | 2013-07-01 | 2013-07-01 | 0d |
| 54 | 4.7.1 | Sprint Plan |  | 1d? | 2013-07-01 | 2013-07-01 | 0d |
| 55 | 4.7.2 | TODO: |  | 1d? | 2013-07-01 | 2013-07-01 | 0d |
| 56 | 4.7.3 | Develop automated test for sprint |  | 1d? | 2013-07-01 | 2013-07-01 | 0d |
| 57 | 4.7.4 | Release Sprint | milestone | 0d | 2013-07-01 | 2013-07-01 | 1d |
| 58 | 4.7.5 | Sprint Review & Improve Process |  | 1d? | 2013-07-01 | 2013-07-01 | 0d |
| 59 | 4.8 | **Sprint Z** |  | 1d? | 2013-07-01 | 2013-07-01 | 0d |
| 60 | 4.8.1 | Sprint Plan |  | 1d? | 2013-07-01 | 2013-07-01 | 0d |
| 61 | 4.8.2 | TODO: |  | 1d? | 2013-07-01 | 2013-07-01 | 0d |
| 62 | 4.8.3 | Develop automated test for sprint |  | 1d? | 2013-07-01 | 2013-07-01 | 0d |
| 63 | 4.8.4 | Release Sprint | milestone | 0d | 2013-07-01 | 2013-07-01 | 1d |
| 64 | 4.8.5 | Sprint Review & Improve Process |  | 1d? | 2013-07-01 | 2013-07-01 | 0d |
| 65 | 4.9 | Release to Market | milestone | 0d | 2013-07-01 | 2013-07-01 | 1d |
| 66 | 4.10 | On going maintenance |  | 1d? | 2013-07-01 | 2013-07-01 | 0d |
| 67 | 4.11 | On going support |  | 1d? | 2013-07-01 | 2013-07-01 | 0d |
